# caB2BIterationWiseMPP

Schedule from MS Project, 2007-02-16 to 2007-06-01, A marks actual dates.
Persistent Systems Pvt. Ltd.

## Calendars

- Standard: Mon-Fri 08:00-12:00, 13:00-17:00; Sat-Sun off.

## Resources

| Resource |
| --- |
| Chandrakant |
| Srinath |
| Chetan |
| Mahesh |
| Pratibha |
| Deepak |
| All |
| Sayali |
| Hrishikesh |
| Sreekanth |
| caTissue Team |
| café Team |

## Schedule

| ID | WBS | Task | Type | Duration | Start | Finish | Predecessors | Complete | Remaining | Baseline start | Baseline finish | Baseline duration | Total slack | Free slack | Constraint | Resources | Work | Actual work |
| --- | --- | --- | --- | --- | --- | --- | --- | --- | --- | --- | --- | --- | --- | --- | --- | --- | --- | --- |
| 1 | 1 | February iteration release | milestone | 0d | 2007-03-02 A | 2007-03-02 A |  | 100% |  | 2007-03-02 | 2007-03-02 | 0d |  |  | start no earlier than 2007-02-28 |  |  |  |
| 2 | 2 | **Mar Iteration** |  | 40d? | 2007-02-16 A | 2007-04-12 |  | 22% | 31.19d? | 2007-03-02 | 2007-04-05 | 25d | 36d |  |  |  | 1616h | 389.2h |
| 3 | 2.1 | Custom display names for meta data categories |  | 2d | 2007-03-02 A | 2007-03-05 A | 1 | 100% |  |  |  |  |  |  |  | Chandrakant; Deepak | 32h | 32h |
| 4 | 2.2 | **Inheritance** |  | 14d | 2007-03-06 A | 2007-03-23 A |  | 100% |  | 2007-03-02 | 2007-03-14 | 9d |  |  |  |  | 168h | 168h |
| 5 | 2.2.1 | Path interpretation |  | 7d | 2007-03-06 A | 2007-03-14 A | 3 | 100% |  | 2007-03-02 | 2007-03-08 | 5d |  |  |  | Chandrakant; Srinath | 112h | 112h |
| 6 | 2.2.2 | Performance Improvement |  | 5d | 2007-03-15 A | 2007-03-21 A | 5 | 100% |  |  |  |  |  |  |  | Srinath | 40h | 40h |
| 7 | 2.2.3 | Query module testing |  | 2d | 2007-03-22 A | 2007-03-23 A | 6 | 100% |  | 2007-03-13 | 2007-03-14 | 2d |  |  |  | Srinath | 16h | 16h |
| 8 | 2.3 | **Storing curated paths** |  | 14d | 2007-03-15 A | 2007-04-03 |  | 17% | 11.6d | 2007-03-09 | 2007-03-16 | 6d | 52d |  |  |  | 112h | 19.2h |
| 9 | 2.3.1 | Backend |  | 12d | 2007-03-15 A | 2007-03-30 | 5 | 20% | 9.6d | 2007-03-09 | 2007-03-14 | 4d | 35d | 0d | finish no earlier than 2007-03-30 | Chandrakant | 96h | 19.2h |
| 10 | 2.3.2 | Ambiguity Resolver UI change |  | 2d | 2007-04-02 | 2007-04-03 | 9 |  |  | 2007-03-15 | 2007-03-16 | 2d | 52d | 0d |  | Deepak | 16h |  |
| 11 | 2.4 | Internal Build | milestone | 0d | 2007-04-03 | 2007-04-03 | 10 |  |  | 2007-03-16 | 2007-03-16 | 0d | 52d |  |  |  |  |  |
| 12 | 2.5 | **Enhancements to metadata search** |  | 17d | 2007-03-05 A | 2007-03-27 |  | 71% | 5d | 2007-03-02 | 2007-03-12 | 7d | 57d |  |  |  | 136h | 96h |
| 13 | 2.5.1 | Backend implementation |  | 15d | 2007-03-05 A | 2007-03-23 | 1 | 80% | 3d | 2007-03-02 | 2007-03-08 | 5d | 49d | 0d |  | Hrishikesh | 120h | 96h |
| 14 | 2.5.2 | User Interface |  | 2d | 2007-03-26 | 2007-03-27 | 13 |  |  | 2007-03-09 | 2007-03-12 | 2d | 57d |  |  | Deepak | 16h |  |
| 15 | 2.6 | **Create Experiment** |  | 23d | 2007-03-02 A | 2007-04-03 |  | 30% | 16.05d | 2007-03-02 | 2007-03-19 | 12d | 36d |  |  |  | 208h | 58h |
| 16 | 2.6.1 | Backend support for saving newly created experiment |  | 20d | 2007-03-05 A | 2007-03-30 | 1 | 26% | 14.75d | 2007-03-02 | 2007-03-15 | 10d | 36d | 0d |  | Chetan | 160h | 42h |
| 17 | 2.6.2 | UI wizard to create new experiment |  | 2d | 2007-03-02 A | 2007-03-05 A | 1 | 100% |  | 2007-03-02 | 2007-03-05 | 2d |  |  |  | Deepak | 16h | 16h |
| 18 | 2.6.3 | Integrate UI with backend APIs |  | 2d | 2007-04-02 | 2007-04-03 | 16 |  |  | 2007-03-16 | 2007-03-19 | 2d | 36d | 0d |  | Deepak; Chetan | 32h |  |
| 19 | 2.7 | **Open Experiment** |  | 28d | 2007-03-06 A | 2007-04-12 |  | 22% | 21.78d | 2007-03-06 | 2007-03-28 | 17d | 36d |  |  |  | 96h | 16h |
| 20 | 2.7.1 | Backend support for fetching experiment details |  | 4d | 2007-04-04 | 2007-04-09 | 18 |  |  | 2007-03-20 | 2007-03-23 | 4d | 36d | 0d |  | Chetan | 32h |  |
| 21 | 2.7.2 | UI for opening an experiment |  | 2d | 2007-03-06 A | 2007-03-07 A | 17 | 100% |  | 2007-03-06 | 2007-03-07 | 2d |  |  |  | Deepak | 16h | 16h |
| 22 | 2.7.3 | Integrate UI with backend |  | 3d | 2007-04-10 | 2007-04-12 | 20, 27 |  |  | 2007-03-26 | 2007-03-28 | 3d | 36d |  |  | Deepak; Chetan | 48h |  |
| 23 | 2.8 | DAG-Connect All functionality |  | 7d | 2007-03-13 A | 2007-03-21 | 1 |  | 7d | 2007-03-02 | 2007-03-12 | 7d | 0d |  |  | Pratibha | 56h |  |
| 24 | 2.9 | caArray Support in query module |  | 1d? | 2007-02-16 | 2007-02-16 |  |  |  |  |  |  | 84d |  |  |  |  |  |

Notes:
- 1: Released following functionalities: / 1. Fixed following bugs/enhancements / ·3742 - Support for 'My data list'. / ·Bug#3741 - 'Apply All' functionality. / ·Bug#3789 - Export functionality for data list. / ·Bug#3378 - Removal of dependency on client jars. / ·Bug#3595 - Incoming unidirectional associations should be shown in "related classes" section. / ·Bug#3207 - Appropriate message now displayed if there are no results for metadata search. / ·Bug#3513 - Handling target resolutions / ·Bug#3336 - For queries returning single results, user is directly taken to the 'results details' page. / 2. Following usability issues are also fixed : / ·Background color (set to white) of all screens. / ·UI for the LHS section on home page UI visually improved (support for custom icons, title and collapsible/un-collapsible visual indicator) / 3. Bug# 3606 : Adding data for asscociated objects first to the data list does not get added.
- 3: Initially class names displayed in meta-data search results use to show complete package name alongwith actual name. This has been changed to show applicationname::version::classname.
- 5: 26th March : / Algorithm has to be tested against caBIO. This activity has been post-poned for this iteration. / This task required extra efforts as we found out a bug in path interpretation. Few of the paths were missing using the older path interpretation algorithm. / We changed the approach to interprete a path.
- 6: 20th March : / New algorithm was enhanced to further improve performance, with the result that we are now able to load the following models / caFE / caTissueCore / caArray. / However, while loading caBIO, we are still facing out of memory issues. Work is currently in progress to resolve this issue / ------------------------------------- / 15th March: / In path interpretation algorithm, initially paths were stored in memory and then stored into the database. / With inheritance into picture, amount of paths generated increased drastically and application gave out of memory error. This task is to resolve this issue
- 7: The module is tested (in tems of being able to connect on DAG) for the models we have been able to load
- 11: Release with just the inheritance and curated paths features.
- 13: 20th March / 1. Finished implementation of search based on permissible values. unit testing is currently underway. / ------------------------------------------------------------- / 15th March / 1. Task required lot of restructuring of already existing code / 2. Hrishikesh was on leave for 2 days as he got operated
- 15: 1. Functionality to create experiment from data list added content. This release will always create new experiment from the data list contents
- 16: 20th March / 1.Finalized approach. Design is currently in progress / 15th March / Investigating DE approach took long
- 22: 1. "Create new experiment" button not supported for this release
- 24: Working on finalizing approach for storage as well as vizualizaion (on add limit page)for custom attributes.

| ID | WBS | Task | Type | Duration | Start | Finish | Predecessors | Baseline start | Baseline finish | Baseline duration | Total slack | Free slack | Resources | Work |
| --- | --- | --- | --- | --- | --- | --- | --- | --- | --- | --- | --- | --- | --- | --- |
| 25 | 2.10 | **Bugzilla Fixes** |  | 1d? | 2007-02-16 | 2007-02-16 |  |  |  |  | 84d |  |  |  |
| 26 | 2.10.1 | Firing multiple queries for apply all in separate threads for performance boost. |  | 1d? | 2007-02-16 | 2007-02-16 |  |  |  |  | 84d |  |  |  |
| 27 | 2.11 | Fixing UI issues |  | 10d | 2007-03-08 | 2007-03-21 | 21 | 2007-03-08 | 2007-03-21 | 10d | 14d | 13d | Deepak | 80h |
| 28 | 2.12 | **Data services** |  | 26d | 2007-03-02 | 2007-04-06 |  | 2007-03-02 | 2007-03-26 | 17d | 49d |  |  | 440h |
| 29 | 2.12.1 | Getting caArray data related to caTissue extended model. |  | 10d | 2007-03-22 | 2007-04-04 | 23 | 2007-03-13 | 2007-03-26 | 10d | 51d |  | Sreekanth; Pratibha | 160h |
| 30 | 2.12.2 | caTissue extended models (with caArray) |  | 15d | 2007-03-02 | 2007-03-22 | 1 | 2007-03-02 | 2007-03-22 | 15d | 60d |  | caTissue Team | 120h |
| 31 | 2.12.3 | Extended caFE model for caArray (Grid Service) |  | 10d | 2007-03-02 | 2007-03-15 | 1 | 2007-03-02 | 2007-03-15 | 10d | 65d |  | café Team | 80h |
| 32 | 2.12.4 | GenePattern analysis service investigation and design |  | 10d | 2007-03-26 | 2007-04-06 | 13 | 2007-03-09 | 2007-03-22 | 10d | 49d |  | Hrishikesh | 80h |
| 33 | 2.13 | Testing and bug fixes |  | 5d | 2007-03-22 | 2007-03-28 | 23 | 2007-03-29 | 2007-04-04 | 5d | 0d |  | All | 40h |
| 34 | 2.14 | Release notes |  | 1d | 2007-03-29 | 2007-03-29 | 33 | 2007-04-05 | 2007-04-05 | 1d | 26d | 0d | Mahesh | 8h |
| 35 | 2.15 | Updated design document |  | 10d | 2007-03-02 | 2007-03-15 | 1 | 2007-03-02 | 2007-03-15 | 10d | 65d |  | All | 80h |
| 36 | 2.16 | End user manual |  | 20d | 2007-03-02 | 2007-03-29 | 1 | 2007-03-02 | 2007-03-29 | 20d | 55d |  | Sayali | 160h |
| 37 | 2.17 | March iteration release | milestone | 0d | 2007-03-29 | 2007-03-29 | 34 | 2007-04-05 | 2007-04-05 | 0d | 26d | 0d | All |  |
| 38 | 3 | **Apr Iteration** |  | 24d | 2007-03-26 | 2007-04-26 |  | 2007-03-29 | 2007-05-03 | 26d | 3d |  |  | 1112h |
| 39 | 3.1 | **Server issues** |  | 19d | 2007-03-26 | 2007-04-19 |  | 2007-03-02 | 2007-03-28 | 19d | 26d |  |  | 216h |
| 40 | 3.1.1 | Category as output backend |  | 7d | 2007-03-26 | 2007-04-03 | 1, 7 | 2007-03-02 | 2007-03-12 | 7d | 35d | 0d | Srinath | 56h |
| 41 | 3.1.2 | Category as output backend integration with UI and testing |  | 5d | 2007-04-13 | 2007-04-19 | 7, 44 | 2007-03-22 | 2007-03-28 | 5d | 35d | 0d | Srinath; Mahesh | 80h |
| 42 | 3.1.3 | WS enumeration based data services to lazy load large data sets |  | 5d | 2007-04-02 | 2007-04-06 | 9 | 2007-03-15 | 2007-03-21 | 5d | 35d | 0d | Chandrakant | 40h |
| 43 | 3.1.4 | Handling large datasets |  | 5d | 2007-04-09 | 2007-04-13 | 42 | 2007-03-22 | 2007-03-28 | 5d | 35d |  | Chandrakant | 40h |
| 44 | 3.2 | View category in results |  | 7d | 2007-04-04 | 2007-04-12 | 40 | 2007-03-13 | 2007-03-21 | 7d | 35d | 0d | Mahesh | 56h |
| 45 | 3.3 | **Experiment Data Category** |  | 21d | 2007-03-29 | 2007-04-26 |  | 2007-03-29 | 2007-04-17 | 14d | 26d |  |  | 112h |
| 46 | 3.3.1 | UI for data category hierarchy (Slide 44) |  | 5d | 2007-03-29 | 2007-04-04 | 33 | 2007-04-05 | 2007-04-11 | 5d | 33d | 0d | Chetan | 40h |
| 47 | 3.3.2 | Backend to get data for selected category |  | 5d | 2007-04-20 | 2007-04-26 | 41 | 2007-03-29 | 2007-04-04 | 5d | 35d |  | Srinath | 40h |
| 48 | 3.3.3 | Handle onClick event of category |  | 2d | 2007-04-05 | 2007-04-06 | 46 | 2007-04-12 | 2007-04-13 | 2d | 33d | 0d | Chetan | 16h |
| 49 | 3.3.4 | Search in data category |  | 2d | 2007-04-09 | 2007-04-10 | 48 | 2007-04-16 | 2007-04-17 | 2d | 33d | 0d | Chetan | 16h |

Notes:
- 26: Implementation started. Currently stuck with technical issues
- 40: Won't be able to deliver in March release
- 41: Won't be able to deliver in March release
- 44: Won't be able to deliver in March release
- 46: 1. "Create custom category" button not supported

| ID | WBS | Task | Type | Duration | Start | Finish | Predecessors | Baseline start | Baseline finish | Baseline duration | Total slack | Free slack | Resources | Work |
| --- | --- | --- | --- | --- | --- | --- | --- | --- | --- | --- | --- | --- | --- | --- |
| 50 | 3.4 | **View experiment data sheet** |  | 7d | 2007-03-29 | 2007-04-06 |  | 2007-04-05 | 2007-04-13 | 7d | 27d |  |  | 56h |
| 51 | 3.4.1 | UI for showing spreadsheet of selected category dataset |  | 5d | 2007-03-29 | 2007-04-04 | 33 | 2007-04-05 | 2007-04-11 | 5d | 27d | 0d | Deepak | 40h |
| 52 | 3.4.2 | Hide/Unhide columns in the spreadsheet |  | 2d | 2007-04-05 | 2007-04-06 | 51 | 2007-04-12 | 2007-04-13 | 2d | 27d | 0d | Deepak | 16h |
| 53 | 3.5 | **Visualizations for experiment datasets** |  | 9d | 2007-03-29 | 2007-04-10 |  | 2007-04-05 | 2007-04-17 | 9d | 5d |  |  | 72h |
| 54 | 3.5.1 | Plotting selected dataset columns as a graph (like Sigma plot) |  | 5d | 2007-03-29 | 2007-04-04 | 33 | 2007-04-05 | 2007-04-11 | 5d | 42d |  | Mahesh | 40h |
| 55 | 3.5.2 | CDE based literature network viewer |  | 4d | 2007-04-05 | 2007-04-10 | 60 | 2007-04-12 | 2007-04-17 | 4d | 0d |  | Chandrakant | 32h |
| 56 | 3.6 | **Analytical services** |  | 14d | 2007-03-29 | 2007-04-17 |  | 2007-04-05 | 2007-04-24 | 14d | 0d |  |  | 176h |
| 57 | 3.6.1 | Genepattern analytical service support |  | 7d | 2007-03-29 | 2007-04-06 | 33 | 2007-04-05 | 2007-04-13 | 7d | 35d | 0d | Hrishikesh | 56h |
| 58 | 3.6.2 | dynamic UI generation for selected analytical service |  | 5d | 2007-04-09 | 2007-04-13 | 57 | 2007-04-16 | 2007-04-20 | 5d | 35d |  | Hrishikesh | 40h |
| 59 | 3.6.3 | Report tab for analysis to see status of different analysis |  | 5d | 2007-04-11 | 2007-04-17 | 49 | 2007-04-18 | 2007-04-24 | 5d | 33d |  | Chetan | 40h |
| 60 | 3.6.4 | Backend support to search for analytical service instance and execute query on same |  | 5d | 2007-03-29 | 2007-04-04 | 33 | 2007-04-05 | 2007-04-11 | 5d | 0d |  | Chandrakant | 40h |
| 61 | 3.7 | **Filter Experiment Data set** |  | 8d | 2007-04-09 | 2007-04-18 |  | 2007-04-16 | 2007-04-25 | 8d | 27d |  |  | 64h |
| 62 | 3.7.1 | UI to filter data set |  | 5d | 2007-04-09 | 2007-04-13 | 52 | 2007-04-16 | 2007-04-20 | 5d | 27d | 0d | Deepak | 40h |
| 63 | 3.7.2 | Create category for with filtered data-set |  | 3d | 2007-04-16 | 2007-04-18 | 62 | 2007-04-23 | 2007-04-25 | 3d | 27d | 0d | Deepak | 24h |
| 64 | 3.8 | **User authentication** |  | 9d | 2007-03-29 | 2007-04-10 |  | 2007-04-05 | 2007-04-17 | 9d | 33d |  |  | 72h |
| 65 | 3.8.1 | Login screen |  | 2d | 2007-03-29 | 2007-03-30 | 33 | 2007-04-05 | 2007-04-06 | 2d | 33d | 0d | Pratibha | 16h |
| 66 | 3.8.2 | Backend support to authenticate user |  | 7d | 2007-04-02 | 2007-04-10 | 65 | 2007-04-09 | 2007-04-17 | 7d | 33d | 6d | Pratibha | 56h |
| 67 | 3.9 | Add caB2B project in Tools webpage of caBIG |  | 3d | 2007-03-30 | 2007-04-03 | 37 |  |  |  | 43d |  |  |  |
| 68 | 3.10 | Testing and bug fixes |  | 5d | 2007-04-19 | 2007-04-25 | 66, 63 | 2007-04-26 | 2007-05-02 | 5d | 27d |  | All | 40h |
| 69 | 3.11 | Preparing installer |  | 7d | 2007-04-11 | 2007-04-19 | 55 | 2007-04-18 | 2007-04-26 | 7d | 0d |  |  |  |
| 70 | 3.12 | Release notes |  | 1d | 2007-04-20 | 2007-04-20 | 69 | 2007-04-27 | 2007-04-27 | 1d | 0d |  | Mahesh | 8h |
| 71 | 3.13 | Updated design document |  | 10d | 2007-03-30 | 2007-04-12 | 37 | 2007-04-06 | 2007-04-19 | 10d | 36d |  | All | 80h |
| 72 | 3.14 | End user manual |  | 20d | 2007-03-30 | 2007-04-26 | 37 | 2007-04-06 | 2007-05-03 | 20d | 26d |  | Sayali | 160h |
| 73 | 3.15 | Beta release | milestone | 0d | 2007-04-20 | 2007-04-20 | 70 | 2007-04-27 | 2007-04-27 | 0d | 0d |  | All |  |

Notes:
- 51: 1. Formula drop-down not required. / 2. The functionality should be similar to Excel sheet
- 64: Pull this in April Release

| ID | WBS | Task | Type | Duration | Start | Finish | Predecessors | Baseline start | Baseline finish | Baseline duration | Total slack | Free slack | Resources | Work |
| --- | --- | --- | --- | --- | --- | --- | --- | --- | --- | --- | --- | --- | --- | --- |
| 74 | 4 | **May Iteration** |  | 30d | 2007-04-23 | 2007-06-01 |  | 2007-04-30 | 2007-05-29 | 22d | 0d |  |  | 504h |
| 75 | 4.1 | Set-up wiki site for caB2B |  | 5d | 2007-04-23 | 2007-04-27 | 73 |  |  |  | 0d |  |  |  |
| 76 | 4.2 | Review of user manual document by end users |  | 10d | 2007-04-30 | 2007-05-11 | 75, 73 |  |  |  | 0d |  |  |  |
| 77 | 4.3 | Beta testing by end users |  | 15d | 2007-05-14 | 2007-06-01 | 76 | 2007-04-30 | 2007-05-18 | 15d | 0d |  | All | 120h |
| 78 | 4.4 | Beta release bug fixes |  | 20d | 2007-04-23 | 2007-05-18 | 73 | 2007-04-30 | 2007-05-25 | 20d | 8d | 0d | All | 160h |
| 79 | 4.5 | Installation guide |  | 7d | 2007-04-23 | 2007-05-01 | 73 | 2007-04-30 | 2007-05-08 | 7d | 23d | 15d | All | 56h |
| 80 | 4.6 | User manual |  | 7d | 2007-04-23 | 2007-05-01 | 73 | 2007-04-30 | 2007-05-08 | 7d | 23d |  | All | 56h |
| 81 | 4.7 | Test cases and test execution report |  | 2d | 2007-05-21 | 2007-05-22 | 78 | 2007-05-28 | 2007-05-29 | 2d | 8d | 0d | All | 16h |
| 82 | 4.8 | Final design document |  | 5d | 2007-04-23 | 2007-04-27 | 73 | 2007-04-30 | 2007-05-04 | 5d | 25d | 17d | All | 40h |
| 83 | 4.9 | Final use case document |  | 5d | 2007-04-23 | 2007-04-27 | 73 | 2007-04-30 | 2007-05-04 | 5d | 25d | 17d | All | 40h |
| 84 | 4.10 | Lessons learned document |  | 2d | 2007-04-23 | 2007-04-24 | 73 | 2007-04-30 | 2007-05-01 | 2d | 28d | 20d | All | 16h |
| 85 | 4.11 | Final release | milestone | 0d | 2007-05-22 | 2007-05-22 | 78, 79, 82, 83, 84, 81 | 2007-05-29 | 2007-05-29 | 0d | 8d |  |  |  |
